# Exascale Software Initiative

Schedule from ProjectLibre, 2013-09-02 to 2015-05-01.

## Calendars

- Default: Mon-Fri 08:00-12:00, 13:00-17:00; Sat-Sun off.

## Resources

| Resource |
| --- |
| Unassigned |
| Santiago Núñez Corrales |

## Schedule

| ID | WBS | Task | Duration | Start | Finish | Predecessors | Total slack | Constraint | Resources |
| --- | --- | --- | --- | --- | --- | --- | --- | --- | --- |
| 1 | 1 | **AinurOS** | 435d | 2013-09-02 | 2015-05-01 |  |  | start no earlier than 2013-09-01 |  |
| 2 | 1 | **Conceptual design** | 16d | 2013-09-02 | 2013-09-23 |  | 7800d | start no earlier than 2013-09-02 | Santiago Núñez Corrales |
| 3 | 1.1 | Planning | 2d | 2013-09-02 | 2013-09-03 |  | 7800d | start no earlier than 2013-09-01 | Santiago Núñez Corrales |
| 4 | 1.2 | Problem statement | 2d | 2013-09-04 | 2013-09-05 | 3 | 7800d |  | Santiago Núñez Corrales |
| 5 | 1.3 | State of the art: hardware | 5d | 2013-09-06 | 2013-09-12 | 4 | 7800d |  | Santiago Núñez Corrales |
| 6 | 1.4 | State of the art: software | 5d | 2013-09-13 | 2013-09-19 | 5 | 7800d |  | Santiago Núñez Corrales |
| 7 | 1.5 | Goals | 1d | 2013-09-20 | 2013-09-20 | 6 | 7800d |  | Santiago Núñez Corrales |
| 8 | 1.6 | Specific outcomes | 1d | 2013-09-23 | 2013-09-23 | 7 | 7800d |  | Santiago Núñez Corrales |
| 9 | 2 | **Hardware platform** | 8d | 2014-01-10 | 2014-01-21 |  |  |  |  |
| 10 | 2.1 | Evaluation of potential platforms | 3d | 2014-01-10 | 2014-01-14 | 8 |  |  |  |
| 11 | 2.2 | Selection of development platform | 2d | 2014-01-15 | 2014-01-16 | 10 |  |  |  |
| 12 | 2.3 | Selection of target platform | 2d | 2014-01-17 | 2014-01-20 | 11 |  |  |  |
| 13 | 2.6 | Setup and testing | 1d | 2014-01-21 | 2014-01-21 | 12 |  |  |  |
| 14 | 3 | **Software design** | 93d | 2014-01-22 | 2014-05-30 |  | 24000d |  |  |
| 15 | 3.1 | General design of components | 1d | 2014-01-22 | 2014-01-22 | 13 |  |  | Santiago Núñez Corrales |
| 16 | 3.2 | General functional design | 1d | 2014-01-23 | 2014-01-23 | 15 |  |  | Santiago Núñez Corrales |
| 17 | 3.3 | Installation of Clean | 1d | 2014-01-24 | 2014-01-24 | 16 |  |  | Santiago Núñez Corrales |
| 18 | 3.4 | Revision of the Clean language | 1d | 2014-01-27 | 2014-01-27 | 17 |  |  | Santiago Núñez Corrales |
| 19 | 3.5 | Creation of the code repository in GitHub | 1d | 2014-01-28 | 2014-01-28 | 18 |  |  | Santiago Núñez Corrales |
| 20 | 3.6 | Instantiation into a local repository | 1d | 2014-01-29 | 2014-01-29 | 19 |  |  | Santiago Núñez Corrales |
| 21 | 3.7 | Upload of documentation | 1d | 2014-01-30 | 2014-01-30 | 20 |  |  | Santiago Núñez Corrales |
| 22 | 3.8 | Creation of software structure | 1d | 2014-01-31 | 2014-01-31 | 21 | 32500d |  | Santiago Núñez Corrales |
| 23 | 3.9 | **Design of interfaces** | 86d | 2014-01-31 | 2014-05-30 |  |  |  |  |
| 24 | 3.9.1 | **Local** | 20d | 2014-01-31 | 2014-02-27 |  |  |  |  |
| 25 | 3.9.1.1 | **Core** | 8d | 2014-01-31 | 2014-02-11 |  |  |  |  |
| 26 | 3.9.1.1.1 | Interrupt | 1d | 2014-01-31 | 2014-01-31 | 21 |  |  |  |
| 27 | 3.9.1.1.2 | Trap | 1d | 2014-02-03 | 2014-02-03 | 26 |  |  |  |
| 28 | 3.9.1.1.3 | Scheduler | 2d | 2014-02-04 | 2014-02-05 | 27 |  |  |  |
| 29 | 3.9.1.1.4 | Bootstrap | 2d | 2014-02-06 | 2014-02-07 | 28 |  |  |  |
| 30 | 3.9.1.1.5 | Syscall | 1d | 2014-02-10 | 2014-02-10 | 29 |  |  |  |
| 31 | 3.9.1.1.6 | Process | 1d | 2014-02-11 | 2014-02-11 | 30 |  |  |  |
| 32 | 3.9.1.2 | Arch | 2d | 2014-02-12 | 2014-02-13 | 31 |  |  |  |
| 33 | 3.9.1.3 | Mach | 2d | 2014-02-14 | 2014-02-17 | 32 |  |  |  |
| 34 | 3.9.1.4 | Mem | 1d | 2014-02-18 | 2014-02-18 | 33 |  |  |  |
| 35 | 3.9.1.5 | IO | 1d | 2014-02-19 | 2014-02-19 | 34 |  |  |  |
| 36 | 3.9.1.6 | Net | 3d | 2014-02-20 | 2014-02-24 | 35 |  |  |  |
| 37 | 3.9.1.7 | Drivers | 3d | 2014-02-25 | 2014-02-27 | 36 |  |  |  |

| ID | WBS | Task | Duration | Start | Finish | Predecessors |
| --- | --- | --- | --- | --- | --- | --- |
| 38 | 3.9.2 | **Channel** | 7d | 2014-02-28 | 2014-03-10 |  |
| 39 | 3.9.2.1 | Compute | 1d | 2014-02-28 | 2014-02-28 | 37 |
| 40 | 3.9.2.2 | IO | 1d | 2014-03-03 | 2014-03-03 | 39 |
| 41 | 3.9.2.3 | Profile | 1d | 2014-03-04 | 2014-03-04 | 40 |
| 42 | 3.9.2.4 | Access | 1d | 2014-03-05 | 2014-03-05 | 41 |
| 43 | 3.9.2.5 | Service | 1d | 2014-03-06 | 2014-03-06 | 42 |
| 44 | 3.9.2.6 | Control | 1d | 2014-03-07 | 2014-03-07 | 43 |
| 45 | 3.9.2.7 | Debug | 1d | 2014-03-10 | 2014-03-10 | 44 |
| 46 | 3.9.3 | **IO** | 16d | 2014-03-11 | 2014-04-01 |  |
| 47 | 3.9.3.1 | File | 2d | 2014-03-11 | 2014-03-12 | 45 |
| 48 | 3.9.3.2 | Directory | 1d | 2014-03-13 | 2014-03-13 | 47 |
| 49 | 3.9.3.3 | Traversal | 1d | 2014-03-14 | 2014-03-14 | 48 |
| 50 | 3.9.3.4 | Path | 1d | 2014-03-17 | 2014-03-17 | 49 |
| 51 | 3.9.3.5 | Atom | 1d | 2014-03-18 | 2014-03-18 | 50 |
| 52 | 3.9.3.6 | Property | 1d | 2014-03-19 | 2014-03-19 | 51 |
| 53 | 3.9.3.7 | Tag | 2d | 2014-03-20 | 2014-03-21 | 52 |
| 54 | 3.9.3.8 | Filesystem | 3d | 2014-03-24 | 2014-03-26 | 53 |
| 55 | 3.9.3.9 | Disk | 2d | 2014-03-27 | 2014-03-28 | 54 |
| 56 | 3.9.3.10 | Geometry | 1d | 2014-03-31 | 2014-03-31 | 55 |
| 57 | 3.9.3.11 | Transaction | 1d | 2014-04-01 | 2014-04-01 | 56 |
| 58 | 3.9.4 | **Topology** | 7d | 2014-04-02 | 2014-04-10 |  |
| 59 | 3.9.4.1 | Virtual | 1d | 2014-04-02 | 2014-04-02 | 57 |
| 60 | 3.9.4.2 | Physical | 1d | 2014-04-03 | 2014-04-03 | 59 |
| 61 | 3.9.4.3 | Translation | 1d | 2014-04-04 | 2014-04-04 | 60 |
| 62 | 3.9.4.4 | Resilient | 1d | 2014-04-07 | 2014-04-07 | 61 |
| 63 | 3.9.4.5 | TaskMap | 1d | 2014-04-08 | 2014-04-08 | 62 |
| 64 | 3.9.4.6 | ProcessMap | 1d | 2014-04-09 | 2014-04-09 | 63 |
| 65 | 3.9.4.7 | DataMap | 1d | 2014-04-10 | 2014-04-10 | 64 |

| ID | WBS | Task | Duration | Start | Finish | Predecessors |
| --- | --- | --- | --- | --- | --- | --- |
| 66 | 3.9.5 | **Node** | 6d | 2014-04-11 | 2014-04-18 |  |
| 67 | 3.9.5.1 | Head | 1d | 2014-04-11 | 2014-04-11 | 65 |
| 68 | 3.9.5.2 | IO | 1d | 2014-04-14 | 2014-04-14 | 67 |
| 69 | 3.9.5.3 | Service | 1d | 2014-04-15 | 2014-04-15 | 68 |
| 70 | 3.9.5.4 | Access | 1d | 2014-04-16 | 2014-04-16 | 69 |
| 71 | 3.9.5.5 | Compute | 1d | 2014-04-17 | 2014-04-17 | 70 |
| 72 | 3.9.5.6 | HeadRoot | 1d | 2014-04-18 | 2014-04-18 | 71 |
| 73 | 3.9.6 | **User** | 6d | 2014-04-21 | 2014-04-28 |  |
| 74 | 3.9.6.1 | User | 1d | 2014-04-21 | 2014-04-21 | 72 |
| 75 | 3.9.6.2 | Group | 1d | 2014-04-22 | 2014-04-22 | 74 |
| 76 | 3.9.6.3 | Privilege | 1d | 2014-04-23 | 2014-04-23 | 75 |
| 77 | 3.9.6.4 | Quota | 1d | 2014-04-24 | 2014-04-24 | 76 |
| 78 | 3.9.6.5 | Profile | 1d | 2014-04-25 | 2014-04-25 | 77 |
| 79 | 3.9.6.6 | Role | 1d | 2014-04-28 | 2014-04-28 | 78 |
| 80 | 3.9.7 | **Global** | 16d | 2014-04-29 | 2014-05-20 |  |
| 81 | 3.9.7.1 | Process | 3d | 2014-04-29 | 2014-05-01 | 79 |
| 82 | 3.9.7.2 | Priority | 2d | 2014-05-02 | 2014-05-05 | 81 |
| 83 | 3.9.7.3 | Scheduler | 3d | 2014-05-06 | 2014-05-08 | 82 |
| 84 | 3.9.7.4 | Debug | 3d | 2014-05-09 | 2014-05-13 | 83 |
| 85 | 3.9.7.5 | Profile | 3d | 2014-05-14 | 2014-05-16 | 84 |
| 86 | 3.9.7.6 | Show | 2d | 2014-05-19 | 2014-05-20 | 85 |
| 87 | 3.9.8 | **Module** | 8d | 2014-05-21 | 2014-05-30 |  |
| 88 | 3.9.8.1 | Module | 2d | 2014-05-21 | 2014-05-22 | 86 |
| 89 | 3.9.8.2 | Expression | 2d | 2014-05-23 | 2014-05-26 | 88 |
| 90 | 3.9.8.3 | Inhibition | 2d | 2014-05-27 | 2014-05-28 | 89 |
| 91 | 3.9.8.4 | Catalysis | 2d | 2014-05-29 | 2014-05-30 | 90 |

| ID | WBS | Task | Duration | Start | Finish | Predecessors |
| --- | --- | --- | --- | --- | --- | --- |
| 92 | 4 | **Software implementation** | 240d | 2014-06-02 | 2015-05-01 |  |
| 93 | 4.1 | Programming language setup | 1d | 2014-06-02 | 2014-06-02 | 91 |
| 94 | 4.2 | Compiler setup | 1d | 2014-06-03 | 2014-06-03 | 93 |
| 95 | 4.3 | Editor setup | 1d | 2014-06-04 | 2014-06-04 | 94 |
| 96 | 4.4 | **OS entry** | 12d | 2014-06-05 | 2014-06-20 |  |
| 97 | 4.4.1 | Boilerplate | 5d | 2014-06-05 | 2014-06-11 | 95 |
| 98 | 4.4.2 | Memory setup | 2d | 2014-06-12 | 2014-06-13 | 97 |
| 99 | 4.4.3 | Full kernel load | 5d | 2014-06-16 | 2014-06-20 | 98 |
| 100 | 4.5 | **Implementation of interfaces** | 165d | 2014-06-23 | 2015-02-06 |  |
| 101 | 4.5.1 | **Local** | 38d | 2014-06-23 | 2014-08-13 |  |
| 102 | 4.5.1.1 | **Core** | 21d | 2014-06-23 | 2014-07-21 |  |
| 103 | 4.5.1.1.1 | Interrupt | 3d | 2014-06-23 | 2014-06-25 | 99 |
| 104 | 4.5.1.1.2 | Trap | 2d | 2014-06-26 | 2014-06-27 | 103 |
| 105 | 4.5.1.1.3 | Scheduler | 5d | 2014-06-30 | 2014-07-04 | 104 |
| 106 | 4.5.1.1.4 | Bootstrap | 5d | 2014-07-07 | 2014-07-11 | 105 |
| 107 | 4.5.1.1.5 | Syscall | 3d | 2014-07-14 | 2014-07-16 | 106 |
| 108 | 4.5.1.1.6 | Process | 3d | 2014-07-17 | 2014-07-21 | 107 |
| 109 | 4.5.1.2 | Arch | 3d | 2014-07-22 | 2014-07-24 | 108 |
| 110 | 4.5.1.3 | Mach | 2d | 2014-07-25 | 2014-07-28 | 109 |
| 111 | 4.5.1.4 | IO | 2d | 2014-07-29 | 2014-07-30 | 110 |
| 112 | 4.5.1.5 | Net | 5d | 2014-07-31 | 2014-08-06 | 111 |
| 113 | 4.5.1.6 | Drivers | 5d | 2014-08-07 | 2014-08-13 | 112 |
| 114 | 4.5.2 | **Channel** | 14d | 2014-08-14 | 2014-09-02 |  |
| 115 | 4.5.2.1 | Compute | 2d | 2014-08-14 | 2014-08-15 | 113 |
| 116 | 4.5.2.2 | IO | 2d | 2014-08-18 | 2014-08-19 | 115 |
| 117 | 4.5.2.3 | Profile | 2d | 2014-08-20 | 2014-08-21 | 116 |
| 118 | 4.5.2.4 | Access | 2d | 2014-08-22 | 2014-08-25 | 117 |
| 119 | 4.5.2.5 | Service | 2d | 2014-08-26 | 2014-08-27 | 118 |
| 120 | 4.5.2.6 | Control | 2d | 2014-08-28 | 2014-08-29 | 119 |
| 121 | 4.5.2.7 | Debug | 2d | 2014-09-01 | 2014-09-02 | 120 |

| ID | WBS | Task | Duration | Start | Finish | Predecessors |
| --- | --- | --- | --- | --- | --- | --- |
| 122 | 4.5.3 | **IO** | 26d | 2014-09-03 | 2014-10-08 |  |
| 123 | 4.5.3.1 | File | 3d | 2014-09-03 | 2014-09-05 | 121 |
| 124 | 4.5.3.2 | Directory | 3d | 2014-09-08 | 2014-09-10 | 123 |
| 125 | 4.5.3.3 | Traversal | 1d | 2014-09-11 | 2014-09-11 | 124 |
| 126 | 4.5.3.4 | Path | 1d | 2014-09-12 | 2014-09-12 | 125 |
| 127 | 4.5.3.5 | Atom | 1d | 2014-09-15 | 2014-09-15 | 126 |
| 128 | 4.5.3.6 | Property | 1d | 2014-09-16 | 2014-09-16 | 127 |
| 129 | 4.5.3.7 | Tag | 3d | 2014-09-17 | 2014-09-19 | 128 |
| 130 | 4.5.3.8 | Filesystem | 5d | 2014-09-22 | 2014-09-26 | 129 |
| 131 | 4.5.3.9 | Disk | 5d | 2014-09-29 | 2014-10-03 | 130 |
| 132 | 4.5.3.10 | Geometry | 2d | 2014-10-06 | 2014-10-07 | 131 |
| 133 | 4.5.3.11 | Transaction | 1d | 2014-10-08 | 2014-10-08 | 132 |
| 134 | 4.5.4 | **Topology** | 25d | 2014-10-09 | 2014-11-12 |  |
| 135 | 4.5.4.1 | Virtual | 3d | 2014-10-09 | 2014-10-13 | 133 |
| 136 | 4.5.4.2 | Physical | 3d | 2014-10-14 | 2014-10-16 | 135 |
| 137 | 4.5.4.3 | Translation | 1d | 2014-10-17 | 2014-10-17 | 136 |
| 138 | 4.5.4.4 | Resilient | 5d | 2014-10-20 | 2014-10-24 | 137 |
| 139 | 4.5.4.5 | TaskMap | 3d | 2014-10-27 | 2014-10-29 | 138 |
| 140 | 4.5.4.6 | ProcessMap | 5d | 2014-10-30 | 2014-11-05 | 139 |
| 141 | 4.5.4.7 | DataMap | 5d | 2014-11-06 | 2014-11-12 | 140 |
| 142 | 4.5.5 | **Node** | 18d | 2014-11-13 | 2014-12-08 |  |
| 143 | 4.5.5.1 | Head | 3d | 2014-11-13 | 2014-11-17 | 141 |
| 144 | 4.5.5.2 | IO | 3d | 2014-11-18 | 2014-11-20 | 143 |
| 145 | 4.5.5.3 | Service | 3d | 2014-11-21 | 2014-11-25 | 144 |
| 146 | 4.5.5.4 | Access | 3d | 2014-11-26 | 2014-11-28 | 145 |
| 147 | 4.5.5.5 | Compute | 3d | 2014-12-01 | 2014-12-03 | 146 |
| 148 | 4.5.5.6 | HeadRoot | 3d | 2014-12-04 | 2014-12-08 | 147 |

| ID | WBS | Task | Duration | Start | Finish | Predecessors |
| --- | --- | --- | --- | --- | --- | --- |
| 149 | 4.5.6 | **User** | 18d | 2014-12-09 | 2015-01-01 |  |
| 150 | 4.5.6.1 | User | 3d | 2014-12-09 | 2014-12-11 | 148 |
| 151 | 4.5.6.2 | Group | 3d | 2014-12-12 | 2014-12-16 | 150 |
| 152 | 4.5.6.3 | Privilege | 3d | 2014-12-17 | 2014-12-19 | 151 |
| 153 | 4.5.6.4 | Quota | 3d | 2014-12-22 | 2014-12-24 | 152 |
| 154 | 4.5.6.5 | Profile | 3d | 2014-12-25 | 2014-12-29 | 153 |
| 155 | 4.5.6.6 | Role | 3d | 2014-12-30 | 2015-01-01 | 154 |
| 156 | 4.5.7 | **Global** | 14d | 2015-01-02 | 2015-01-21 |  |
| 157 | 4.5.7.1 | Process | 2d | 2015-01-02 | 2015-01-05 | 155 |
| 158 | 4.5.7.2 | Priority | 1d | 2015-01-06 | 2015-01-06 | 157 |
| 159 | 4.5.7.3 | Scheduler | 3d | 2015-01-07 | 2015-01-09 | 158 |
| 160 | 4.5.7.4 | Debug | 3d | 2015-01-12 | 2015-01-14 | 159 |
| 161 | 4.5.7.5 | Profile | 3d | 2015-01-15 | 2015-01-19 | 160 |
| 162 | 4.5.7.6 | Show | 2d | 2015-01-20 | 2015-01-21 | 161 |
| 163 | 4.5.8 | **Module** | 12d | 2015-01-22 | 2015-02-06 |  |
| 164 | 4.5.8.1 | Module | 3d | 2015-01-22 | 2015-01-26 | 162 |
| 165 | 4.5.8.2 | Expression | 3d | 2015-01-27 | 2015-01-29 | 164 |
| 166 | 4.5.8.3 | Inhibition | 3d | 2015-01-30 | 2015-02-03 | 165 |
| 167 | 4.5.8.4 | Catalysis | 3d | 2015-02-04 | 2015-02-06 | 166 |
| 168 | 4.6 | Implementation of the shell | 5d | 2015-02-09 | 2015-02-13 | 167 |
| 169 | 4.7 | **Implementation of system tools** | 45d | 2015-02-16 | 2015-04-17 |  |
| 170 | 4.7.1 | ls | 3d | 2015-02-16 | 2015-02-18 | 168 |
| 171 | 4.7.2 | find | 3d | 2015-02-19 | 2015-02-23 | 170 |
| 172 | 4.7.3 | grep | 1d | 2015-02-24 | 2015-02-24 | 171 |
| 173 | 4.7.4 | cat | 1d | 2015-02-25 | 2015-02-25 | 172 |
| 174 | 4.7.5 | sed | 3d | 2015-02-26 | 2015-03-02 | 173 |
| 175 | 4.7.6 | cp | 1d | 2015-03-03 | 2015-03-03 | 174 |
| 176 | 4.7.7 | mv | 1d | 2015-03-04 | 2015-03-04 | 175 |
| 177 | 4.7.8 | rm | 1d | 2015-03-05 | 2015-03-05 | 176 |
| 178 | 4.7.9 | mkdir | 1d | 2015-03-06 | 2015-03-06 | 177 |
| 179 | 4.7.10 | rmdir | 1d | 2015-03-09 | 2015-03-09 | 178 |
| 180 | 4.7.11 | useradd | 1d | 2015-03-10 | 2015-03-10 | 179 |
| 181 | 4.7.12 | userdel | 1d | 2015-03-11 | 2015-03-11 | 180 |
| 182 | 4.7.13 | groupadd | 1d | 2015-03-12 | 2015-03-12 | 181 |
| 183 | 4.7.14 | groupdel | 1d | 2015-03-13 | 2015-03-13 | 182 |
| 184 | 4.7.15 | profile | 5d | 2015-03-16 | 2015-03-20 | 183 |
| 185 | 4.7.16 | debug | 5d | 2015-03-23 | 2015-03-27 | 184 |
| 186 | 4.7.17 | editor | 5d | 2015-03-30 | 2015-04-03 | 185 |
| 187 | 4.7.18 | webserver | 5d | 2015-04-06 | 2015-04-10 | 186 |
| 188 | 4.7.19 | primebuild | 5d | 2015-04-13 | 2015-04-17 | 187 |

| ID | WBS | Task | Duration | Start | Finish | Predecessors |
| --- | --- | --- | --- | --- | --- | --- |
| 189 | 4.8 | **Design of scripts** | 10d | 2015-04-20 | 2015-05-01 |  |
| 190 | 4.8.1 | local | 2d | 2015-04-20 | 2015-04-21 | 188 |
| 191 | 4.8.2 | mem_layout | 2d | 2015-04-22 | 2015-04-23 | 190 |
| 192 | 4.8.3 | topology_layout | 2d | 2015-04-24 | 2015-04-27 | 191 |
| 193 | 4.8.4 | channel_layout | 2d | 2015-04-28 | 2015-04-29 | 192 |
| 194 | 4.8.5 | io_layout | 2d | 2015-04-30 | 2015-05-01 | 193 |
